# 软件开发

Schedule from MS Project, 2018-12-04 to 2018-12-25.

## Calendars

- 标准: Mon-Fri 08:00-12:00, 13:00-17:00; Sat-Sun off.

## Resources

| Resource |
| --- |
| 黄彪 |
| 郭强 |
| 李义 |
| 周俊 |
| 张春海 |
| 刘伟威 |
| 覃树春 |
| 胡潇文 |
| 黄曾文 |
| 胡杏滢 |
| 郑小琼 |
| 裴医生 |

## Schedule

| ID | WBS | Task | Duration | Start | Finish | Predecessors | Total slack | Free slack | Constraint | Resources | Work |
| --- | --- | --- | --- | --- | --- | --- | --- | --- | --- | --- | --- |
| 1 | 1 | **功能补齐** | 3d? | 2018-12-04 | 2018-12-06 |  | 13d |  |  | 郭强 | 84h |
| 2 | 1.1 | 分账功能 | 4h | 2018-12-04 | 2018-12-04 |  | 18.5d | 0.5d |  | 李义 | 4h |
| 3 | 1.2 | 移动端医生语音回复 | 1d | 2018-12-05 | 2018-12-05 | 2 | 18d |  | start no earlier than 2018-12-05 | 刘伟威 | 8h |
| 4 | 1.3 | 移动端关键词自动导航功能 | 2d | 2018-12-05 | 2018-12-06 |  | 13d |  | start no earlier than 2018-12-05 | 郭强 | 16h |
| 5 | 1.4 | PC端功能补齐 | 3d | 2018-12-04 | 2018-12-06 |  | 13d |  | finish no earlier than 2018-12-06 | 张春海 | 24h |
| 6 | 1.5 | 分账支持的用户数和分账次数的上限 | 1d? | 2018-12-06 | 2018-12-06 |  | 13d |  | start no earlier than 2018-12-06 | 黄彪 | 8h |
| 7 | 2 | **测试验证** | 9d | 2018-12-04 | 2018-12-14 |  | 7d |  |  | 周俊 | 224h |
| 8 | 2.1 | 系统测试 | 6d | 2018-12-04 | 2018-12-11 |  | 5d | 0d | finish no earlier than 2018-12-11 | 周俊 | 48h |
| 9 | 2.2 | 压力测试（并发量） | 3d | 2018-12-12 | 2018-12-14 | 8 | 5d |  |  | 周俊 | 24h |
| 10 | 2.3 | 公司内部人员测试(两组各50次咨询) | 5d | 2018-12-04 | 2018-12-10 |  | 11d |  | finish no earlier than 2018-12-10 | 胡潇文 | 40h |
| 11 | 2.4 | 外部医生测试(5到10组各10次咨询) | 40h | 2018-12-10 | 2018-12-14 |  | 7d |  | start no earlier than 2018-12-10 | 覃树春 | 40h |
| 12 | 3 | **数据配置** | 6d? | 2018-12-07 | 2018-12-14 |  | 7d |  |  | 胡潇文; 覃树春 | 304h |
| 13 | 3.1 | 科室信息配置(分类、标签) | 1d? | 2018-12-11 | 2018-12-11 | 15 | 9d | 0d | start no earlier than 2018-12-10 | 覃树春 | 8h |
| 14 | 3.2 | 医生信息配置(基本信息和服务信息) | 1d | 2018-12-12 | 2018-12-12 | 13 | 9d |  | finish no earlier than 2018-12-10 | 覃树春 | 8h |
| 15 | 3.3 | 病种标签配置 | 1d? | 2018-12-10 | 2018-12-10 |  | 8d | 0d | start no earlier than 2018-12-10 | 胡潇文 | 8h |
| 16 | 3.4 | 医生订单数据 | 2d? | 2018-12-11 | 2018-12-12 | 15 | 8d | 0d |  | 胡潇文 | 16h |
| 17 | 3.5 | 患者订单数据 | 1d? | 2018-12-13 | 2018-12-13 |  | 6d |  | start no earlier than 2018-12-13 | 覃树春 | 8h |
| 18 | 3.6 | 医生星级评分数据 | 1d? | 2018-12-13 | 2018-12-13 | 16 | 8d |  |  | 胡潇文 | 8h |
| 19 | 3.7 | 评价标签配置 | 1d? | 2018-12-13 | 2018-12-13 |  | 6d |  | start no earlier than 2018-12-13 | 胡潇文 | 8h |
| 20 | 3.8 | 消息提醒配置(包括短信) | 1d? | 2018-12-11 | 2018-12-11 |  | 10d |  | finish no earlier than 2018-12-11 | 覃树春 | 8h |
| 21 | 3.9 | 医生端操作指南配置 | 1d? | 2018-12-14 | 2018-12-14 |  | 5d |  | finish no earlier than 2018-12-14 | 胡潇文 | 8h |
| 22 | 3.10 | 咨询须知配置 | 1d? | 2018-12-14 | 2018-12-14 |  | 7d |  | start no earlier than 2018-12-14 | 覃树春 | 8h |
| 23 | 3.11 | 主动退单（患者、医生、质控）原因配置 | 1d? | 2018-12-12 | 2018-12-12 |  | 9d |  | start no earlier than 2018-12-12 | 胡潇文 | 8h |
| 24 | 3.12 | 患者端体验性提示语输出 | 1d? | 2018-12-07 | 2018-12-07 |  | 10d |  | start no earlier than 2018-12-07 | 覃树春 | 8h |
| 25 | 3.13 | 医生端体验性提示语输出 | 1d? | 2018-12-07 | 2018-12-07 |  | 10d |  | start no earlier than 2018-12-07 | 胡潇文 | 8h |
| 26 | 3.14 | 读文章配置 | 5d? | 2018-12-10 | 2018-12-14 |  | 5d |  | start no earlier than 2018-12-10 | 胡杏滢 | 40h |
| 27 | 3.15 | 看问答数据 | 5d? | 2018-12-10 | 2018-12-14 |  | 5d |  | start no earlier than 2018-12-10 | 黄曾文 | 40h |
| 28 | 3.16 | 回访提示信息配置 | 1d? | 2018-12-07 | 2018-12-07 |  | 10d |  | start no earlier than 2018-12-07 | 胡潇文 | 8h |
| 29 | 3.17 | 系统业务参数配置 | 1d? | 2018-12-12 | 2018-12-12 |  | 9d |  | start no earlier than 2018-12-12 | 裴医生 | 8h |

Notes:
- 4: ddddddddddddddddddddddddddddddddddddddd

| ID | WBS | Task | Duration | Start | Finish | Predecessors | Total slack | Free slack | Constraint | Resources | Work |
| --- | --- | --- | --- | --- | --- | --- | --- | --- | --- | --- | --- |
| 30 | 4 | **系统切换** | 16d? | 2018-12-04 | 2018-12-25 |  | 0d |  |  | 黄彪 | 240h |
| 31 | 4.1 | 系统切换方案 | 1d | 2018-12-04 | 2018-12-04 |  | 15d |  | start no earlier than 2018-12-04 | 黄彪 | 8h |
| 32 | 4.2 | 风险应对策略 | 1d? | 2018-12-07 | 2018-12-07 |  | 8d | 0d | start no earlier than 2018-12-07 | 黄彪 | 8h |
| 33 | 4.3 | **模拟环境切换公众号验证点** | 1d? | 2018-12-10 | 2018-12-10 | 32 | 11d |  |  | 黄彪 | 32h |
| 34 | 4.3.1 | 系统存在的患者用户能否正确实行角色分组 | 1d? | 2018-12-10 | 2018-12-10 |  | 11d |  | start no earlier than 2018-12-06 | 黄彪 | 8h |
| 35 | 4.3.2 | 系统存在的医生用户能否正确实行角色分组 | 1d? | 2018-12-10 | 2018-12-10 |  | 11d |  |  | 黄彪 | 8h |
| 36 | 4.3.3 | 正常的咨询流程及数据配置 | 1d? | 2018-12-10 | 2018-12-10 |  | 11d |  | start no earlier than 2018-12-08 | 黄彪 | 8h |
| 37 | 4.4 | **怡禾健康真实环境验证问题** | 3d? | 2018-12-11 | 2018-12-13 | 32 | 5d |  |  | 黄彪 | 48h |
| 38 | 4.4.1 | 怡禾健康公众号分账功能申请 | 1d? | 2018-12-11 | 2018-12-11 |  | 7d |  | start no earlier than 2018-12-11 | 黄彪 | 8h |
| 39 | 4.4.2 | 怡禾健康商户平台是否支持两个系统财务进入 | 1d? | 2018-12-12 | 2018-12-12 |  | 6d |  | start no earlier than 2018-12-12 | 黄彪 | 8h |
| 40 | 4.4.3 | 腾爱系统二级菜单支持性验证 | 1d? | 2018-12-13 | 2018-12-13 |  | 5d |  | start no earlier than 2018-12-13 | 黄彪 | 8h |
| 41 | 4.5 | **正式切换** | 1d? | 2018-12-21 | 2018-12-21 | 37 |  |  |  |  | 16h |
| 42 | 4.5.1 | 腾讯20日前订单数据导入 | 1d? | 2018-12-21 | 2018-12-21 |  | 0d |  |  | 郭强 | 8h |
| 43 | 4.5.2 | 正式切换(凌晨两点) | 1d? | 2018-12-24 | 2018-12-24 | 42 | 0d |  |  | 郭强 | 8h |
| 44 | 4.5.3 | 切换后数据补充 | 1d? | 2018-12-25 | 2018-12-25 | 43 | 0d |  |  |  |  |
| 45 | 5 | **文档** | 7d? | 2018-12-07 | 2018-12-17 |  | 6d |  |  | 覃树春 | 96h |
| 46 | 5.1 | 医生产品使用指南 | 1d | 2018-12-07 | 2018-12-07 |  | 12d |  | start no earlier than 2018-12-07 | 覃树春 | 8h |
| 47 | 5.2 | 切换公告 | 1d? | 2018-12-14 | 2018-12-14 |  | 7d |  | start no earlier than 2018-12-14 | 覃树春 | 8h |
| 48 | 5.3 | 参数配置表 | 2d? | 2018-12-07 | 2018-12-10 |  | 11d |  | finish no earlier than 2018-12-10 | 周俊 | 16h |
| 49 | 5.4 | 用户指导文档 | 1d | 2018-12-17 | 2018-12-17 |  | 6d |  | start no earlier than 2018-12-17 | 周俊 | 8h |
